# ErasmusNest GC04 · Planificación por sprints

Schedule from ProjectLibre, 2026-10-21 to 2026-12-01.

## Calendars

- ErasmusNest · franja del equipo 16:00-20:00: Mon-Sun 16:00-20:00.

## Resources

| Resource | Group | Rate | Notes |
| --- | --- | --- | --- |
| No Asignado |  |  |  |
| Hugo | Product Owner | 35 | Product Owner · 7 h/semana (hoja Capacidad, v03) · tarifa 35 €/h |
| Gled | Tech Lead | 40 | Tech Lead · 7 h/semana (hoja Capacidad, v03) · tarifa 40 €/h |
| José | Scrum Master | 32 | Scrum Master · 9 h/semana (hoja Capacidad, v03) · tarifa 32 €/h |

## Schedule

| ID | WBS | Task | Type | Duration | Start | Finish | Predecessors | Baseline start | Baseline finish | Constraint | Resources |
| --- | --- | --- | --- | --- | --- | --- | --- | --- | --- | --- | --- |
| 1 | 1 | **IT-001 · R1** |  | 3.5d | 2026-10-21 | 2026-10-27 |  | 2026-10-21 | 2026-10-27 |  |  |
| 2 | 1.1 | MGT IT-001 Sprint planning y refinamiento |  | 0.09d | 2026-10-21 | 2026-10-21 |  | 2026-10-21 | 2026-10-21 | start no earlier than 2026-10-21 | Hugo; Gled; José |
| 3 | 1.2 | US-001 Registrar cuenta con correo institucional |  | 1.41d | 2026-10-21 | 2026-10-23 | 2 | 2026-10-21 | 2026-10-23 | start no earlier than 2026-10-21 | Hugo [13.33%]; Gled [18.67%]; José [12.44%] |
| 4 | 1.3 | US-002 Verificar la cuenta mediante el correo institucional |  | 2d | 2026-10-24 | 2026-10-27 | 3 | 2026-10-24 | 2026-10-27 | start no earlier than 2026-10-24 | Hugo [7.5%]; Gled [9.38%]; José [14.37%] |
| 5 | 1.4 | US-003 Iniciar y cerrar sesión |  | 2d | 2026-10-24 | 2026-10-27 | 3 | 2026-10-24 | 2026-10-27 | start no earlier than 2026-10-24 | Hugo [6.88%]; José [11.88%] |
| 6 | 1.5 | MGT IT-001 Daily asíncrona |  | 3.41d | 2026-10-21 | 2026-10-27 | 2 | 2026-10-21 | 2026-10-27 | start no earlier than 2026-10-21 | Hugo [1.47%]; Gled [1.47%]; José [1.47%] |
| 7 | 1.6 | MGT IT-001 Coordinación del rol |  | 3.41d | 2026-10-21 | 2026-10-27 | 2 | 2026-10-21 | 2026-10-27 | start no earlier than 2026-10-21 | Hugo [1.83%]; Gled [1.83%]; José [1.83%] |
| 8 | 1.7 | MGT IT-001 Reserva de imprevistos |  | 3.41d | 2026-10-21 | 2026-10-27 | 2 | 2026-10-21 | 2026-10-27 | start no earlier than 2026-10-21 | Hugo [3.93%]; Gled [4.91%]; José [2.7%] |
| 9 | 2 | **IT-002 · R1** |  | 3.23d | 2026-10-28 | 2026-11-03 |  | 2026-10-28 | 2026-11-03 |  |  |
| 10 | 2.1 | MGT IT-002 Sprint planning y refinamiento |  | 0.09d | 2026-10-28 | 2026-10-28 |  | 2026-10-28 | 2026-10-28 | start no earlier than 2026-10-28 | Hugo; Gled; José |
| 11 | 2.2 | US-004 Gestionar el perfil básico |  | 1.41d | 2026-10-28 | 2026-10-30 | 5, 10 | 2026-10-28 | 2026-10-30 | start no earlier than 2026-10-28 | Hugo [8.89%]; Gled [3.56%]; José [14.22%] |
| 12 | 2.3 | US-006 Publicar el anuncio de mi habitación |  | 1.91d | 2026-10-28 | 2026-10-31 | 4, 5, 10 | 2026-10-28 | 2026-10-31 | start no earlier than 2026-10-28 | Hugo [7.87%]; Gled [11.8%]; José [13.11%] |
| 13 | 2.4 | US-009 Cerrar mi anuncio |  | 1d | 2026-11-01 | 2026-11-02 | 12 | 2026-11-01 | 2026-11-02 | start no earlier than 2026-11-01 | Hugo [12.5%]; Gled [10%]; José [15%] |
| 14 | 2.5 | MGT IT-002 Daily asíncrona |  | 3.03d | 2026-10-28 | 2026-11-03 | 10 | 2026-10-28 | 2026-11-03 | start no earlier than 2026-10-28 | Hugo [1.65%]; Gled [1.65%]; José [1.65%] |
| 15 | 2.6 | MGT IT-002 Coordinación del rol |  | 3.03d | 2026-10-28 | 2026-11-03 | 10 | 2026-10-28 | 2026-11-03 | start no earlier than 2026-10-28 | Hugo [2.06%]; Gled [2.06%]; José [2.06%] |
| 16 | 2.7 | MGT IT-002 Reserva de imprevistos |  | 3.03d | 2026-10-28 | 2026-11-03 | 10 | 2026-10-28 | 2026-11-03 | start no earlier than 2026-10-28 | Hugo [3.72%]; Gled [4.66%]; José [2.69%] |
| 17 | 2.8 | MGT IT-002 Sprint review y retrospectiva |  | 0.1d | 2026-11-03 | 2026-11-03 | 11, 12, 13 | 2026-11-03 | 2026-11-03 | start no earlier than 2026-11-03 | Hugo; Gled; José |
| 18 | 2.9 | Hito R1 · Release 1 entregada | milestone | 0d | 2026-11-03 | 2026-11-03 | 17 | 2026-11-03 | 2026-11-03 |  |  |
| 19 | 3 | **IT-003 · R2** |  | 3.5d | 2026-11-04 | 2026-11-10 |  | 2026-11-04 | 2026-11-10 |  |  |
| 20 | 3.1 | MGT IT-003 Sprint planning y refinamiento |  | 0.09d | 2026-11-04 | 2026-11-04 |  | 2026-11-04 | 2026-11-04 | start no earlier than 2026-11-04 | Hugo; Gled; José |
| 21 | 3.2 | US-012 Listar los anuncios disponibles |  | 1.41d | 2026-11-04 | 2026-11-06 | 12, 20 | 2026-11-04 | 2026-11-06 | start no earlier than 2026-11-04 | Hugo [8%]; Gled [5.33%]; José [13.33%] |
| 22 | 3.3 | US-007 Añadir fotos al anuncio |  | 2.41d | 2026-11-04 | 2026-11-08 | 12, 20 | 2026-11-04 | 2026-11-08 | start no earlier than 2026-11-04 | Hugo [3.64%]; Gled [7.27%]; José [15.06%] |
| 23 | 3.4 | US-010 Ver mis anuncios y su estado |  | 2d | 2026-11-07 | 2026-11-10 | 12, 20 | 2026-11-07 | 2026-11-10 | start no earlier than 2026-11-07 | Hugo [5%]; Gled [1.25%]; José [12.5%] |
| 24 | 3.5 | MGT IT-003 Daily asíncrona |  | 3.41d | 2026-11-04 | 2026-11-10 | 20 | 2026-11-04 | 2026-11-10 | start no earlier than 2026-11-04 | Hugo [1.47%]; Gled [1.47%]; José [1.47%] |
| 25 | 3.6 | MGT IT-003 Coordinación del rol |  | 3.41d | 2026-11-04 | 2026-11-10 | 20 | 2026-11-04 | 2026-11-10 | start no earlier than 2026-11-04 | Hugo [1.83%]; Gled [1.83%]; José [1.83%] |
| 26 | 3.7 | MGT IT-003 Reserva de imprevistos |  | 3.41d | 2026-11-04 | 2026-11-10 | 20 | 2026-11-04 | 2026-11-10 | start no earlier than 2026-11-04 | Hugo [3.93%]; Gled [4.91%]; José [2.7%] |

Notes:
- 2: Reunión del miércoles 21/10, 16:00-16:45, por Discord: planning 30 min + refinamiento 15 min (team charter, acuerdo 4).
- 3: US-001 · EP-001 · IT-001 · 5 h-p. Horas por persona y fechas de inicio y fin de la hoja Planificación (excel-export-v03).
- 4: US-002 · EP-001 · IT-001 · 5 h-p. Horas por persona y fechas de inicio y fin de la hoja Planificación (excel-export-v03).
- 5: US-003 · EP-001 · IT-001 · 3 h-p. Horas por persona y fechas de inicio y fin de la hoja Planificación (excel-export-v03).
- 6: ≈5 min al día por WhatsApp (acuerdo 5). Es asíncrona: no es una reunión, por eso se reparte a lo largo del sprint.
- 7: Trabajo continuo de PO, TL y SM (hoja Capacidad): refinar el backlog, revisar PR y seguir impedimentos.
- 8: Horas del % de imprevistos de cada persona (DEC-015, hoja Gestión). Solo se gastan si ocurre un imprevisto (RSK-01, RSK-09); tienen coste para que el presupuesto incluya la reserva.
- 10: Reunión del miércoles 28/10, 16:00-16:45, por Discord: planning 30 min + refinamiento 15 min (team charter, acuerdo 4).
- 11: US-004 · EP-001 · IT-002 · 3 h-p. Horas por persona y fechas de inicio y fin de la hoja Planificación (excel-export-v03).
- 12: US-006 · EP-002 · IT-002 · 5 h-p. Horas por persona y fechas de inicio y fin de la hoja Planificación (excel-export-v03).
- 13: US-009 · EP-002 · IT-002 · 3 h-p. Horas por persona y fechas de inicio y fin de la hoja Planificación (excel-export-v03).
- 14: ≈5 min al día por WhatsApp (acuerdo 5). Es asíncrona: no es una reunión, por eso se reparte a lo largo del sprint.
- 15: Trabajo continuo de PO, TL y SM (hoja Capacidad): refinar el backlog, revisar PR y seguir impedimentos.
- 16: Horas del % de imprevistos de cada persona (DEC-015, hoja Gestión). Solo se gastan si ocurre un imprevisto (RSK-01, RSK-09); tienen coste para que el presupuesto incluya la reserva.
- 17: Reunión del martes 03/11, 17:00-17:50: review 25 min + retro 25 min, cada 2 semanas al cerrar la release (acuerdo 6).
- 20: Reunión del miércoles 04/11, 16:00-16:45, por Discord: planning 30 min + refinamiento 15 min (team charter, acuerdo 4).
- 21: US-012 · EP-003 · IT-003 · 3 h-p. Horas por persona y fechas de inicio y fin de la hoja Planificación (excel-export-v03).
- 22: US-007 · EP-002 · IT-003 · 5 h-p. Horas por persona y fechas de inicio y fin de la hoja Planificación (excel-export-v03).
- 23: US-010 · EP-002 · IT-003 · 3 h-p. Horas por persona y fechas de inicio y fin de la hoja Planificación (excel-export-v03).
- 24: ≈5 min al día por WhatsApp (acuerdo 5). Es asíncrona: no es una reunión, por eso se reparte a lo largo del sprint.
- 25: Trabajo continuo de PO, TL y SM (hoja Capacidad): refinar el backlog, revisar PR y seguir impedimentos.
- 26: Horas del % de imprevistos de cada persona (DEC-015, hoja Gestión). Solo se gastan si ocurre un imprevisto (RSK-01, RSK-09); tienen coste para que el presupuesto incluya la reserva.

| ID | WBS | Task | Type | Duration | Start | Finish | Predecessors | Baseline start | Baseline finish | Constraint | Resources |
| --- | --- | --- | --- | --- | --- | --- | --- | --- | --- | --- | --- |
| 27 | 4 | **IT-004 · R2** |  | 3.23d | 2026-11-11 | 2026-11-17 |  | 2026-11-11 | 2026-11-17 |  |  |
| 28 | 4.1 | MGT IT-004 Sprint planning y refinamiento |  | 0.09d | 2026-11-11 | 2026-11-11 |  | 2026-11-11 | 2026-11-11 | start no earlier than 2026-11-11 | Hugo; Gled; José |
| 29 | 4.2 | US-013 Filtrar anuncios por fechas de estancia |  | 1.91d | 2026-11-11 | 2026-11-14 | 21, 28 | 2026-11-11 | 2026-11-14 | start no earlier than 2026-11-11 | Hugo [8.52%]; Gled [10.49%]; José [13.77%] |
| 30 | 4.3 | US-014 Filtrar anuncios por zona |  | 1.41d | 2026-11-11 | 2026-11-13 | 21, 28 | 2026-11-11 | 2026-11-13 | start no earlier than 2026-11-11 | Hugo [8.89%]; Gled [5.33%]; José [12.44%] |
| 31 | 4.4 | US-015 Ver el detalle de un anuncio con su estado |  | 1.5d | 2026-11-14 | 2026-11-16 | 21, 28 | 2026-11-14 | 2026-11-16 | start no earlier than 2026-11-14 | Hugo [8.33%]; Gled [7.5%]; José [9.17%] |
| 32 | 4.5 | MGT IT-004 Daily asíncrona |  | 3.03d | 2026-11-11 | 2026-11-17 | 28 | 2026-11-11 | 2026-11-17 | start no earlier than 2026-11-11 | Hugo [1.65%]; Gled [1.65%]; José [1.65%] |
| 33 | 4.6 | MGT IT-004 Coordinación del rol |  | 3.03d | 2026-11-11 | 2026-11-17 | 28 | 2026-11-11 | 2026-11-17 | start no earlier than 2026-11-11 | Hugo [2.06%]; Gled [2.06%]; José [2.06%] |
| 34 | 4.7 | MGT IT-004 Reserva de imprevistos |  | 3.03d | 2026-11-11 | 2026-11-17 | 28 | 2026-11-11 | 2026-11-17 | start no earlier than 2026-11-11 | Hugo [3.72%]; Gled [4.66%]; José [2.69%] |
| 35 | 4.8 | MGT IT-004 Sprint review y retrospectiva |  | 0.1d | 2026-11-17 | 2026-11-17 | 29, 30, 31 | 2026-11-17 | 2026-11-17 | start no earlier than 2026-11-17 | Hugo; Gled; José |
| 36 | 4.9 | Hito R2 · Release 2 entregada | milestone | 0d | 2026-11-17 | 2026-11-17 | 35 | 2026-11-17 | 2026-11-17 |  |  |
| 37 | 5 | **IT-005 · R3** |  | 3.5d | 2026-11-18 | 2026-11-24 |  | 2026-11-18 | 2026-11-24 |  |  |
| 38 | 5.1 | MGT IT-005 Sprint planning y refinamiento |  | 0.09d | 2026-11-18 | 2026-11-18 |  | 2026-11-18 | 2026-11-18 | start no earlier than 2026-11-18 | Hugo; Gled; José |
| 39 | 5.2 | US-017 Contactar con el oferente desde un anuncio |  | 1.91d | 2026-11-18 | 2026-11-21 | 31, 4, 38 | 2026-11-18 | 2026-11-21 | start no earlier than 2026-11-18 | Hugo [5.9%]; Gled [13.11%]; José [13.77%] |
| 40 | 5.3 | US-008 Editar mi anuncio |  | 1.41d | 2026-11-18 | 2026-11-20 | 12, 38 | 2026-11-18 | 2026-11-20 | start no earlier than 2026-11-18 | Hugo [8.89%]; Gled [3.56%]; José [14.22%] |
| 41 | 5.4 | US-022 Cargar un conjunto de datos sintéticos |  | 2d | 2026-11-21 | 2026-11-24 | 3, 12, 38 | 2026-11-21 | 2026-11-24 | start no earlier than 2026-11-21 | Hugo [6.25%]; Gled [8.12%]; José [16.88%] |
| 42 | 5.5 | MGT IT-005 Daily asíncrona |  | 3.41d | 2026-11-18 | 2026-11-24 | 38 | 2026-11-18 | 2026-11-24 | start no earlier than 2026-11-18 | Hugo [1.47%]; Gled [1.47%]; José [1.47%] |
| 43 | 5.6 | MGT IT-005 Coordinación del rol |  | 3.41d | 2026-11-18 | 2026-11-24 | 38 | 2026-11-18 | 2026-11-24 | start no earlier than 2026-11-18 | Hugo [1.83%]; Gled [1.83%]; José [1.83%] |
| 44 | 5.7 | MGT IT-005 Reserva de imprevistos |  | 3.41d | 2026-11-18 | 2026-11-24 | 38 | 2026-11-18 | 2026-11-24 | start no earlier than 2026-11-18 | Hugo [3.93%]; Gled [4.91%]; José [2.7%] |
| 45 | 6 | **IT-006 · R3** |  | 3.23d | 2026-11-25 | 2026-12-01 |  | 2026-11-25 | 2026-12-01 |  |  |
| 46 | 6.1 | MGT IT-006 Sprint planning y refinamiento |  | 0.09d | 2026-11-25 | 2026-11-25 |  | 2026-11-25 | 2026-11-25 | start no earlier than 2026-11-25 | Hugo; Gled; José |
| 47 | 6.2 | US-018 Mantener una conversación |  | 1.41d | 2026-11-25 | 2026-11-27 | 39, 46 | 2026-11-25 | 2026-11-27 | start no earlier than 2026-11-25 | Hugo [8.89%]; Gled [12.44%]; José [23.11%] |
| 48 | 6.3 | US-019 Aviso de mensajes nuevos |  | 1.5d | 2026-11-28 | 2026-11-30 | 47 | 2026-11-28 | 2026-11-30 | start no earlier than 2026-11-28 | Hugo [4.17%]; Gled [5%]; José [7.5%] |
| 49 | 6.4 | US-023 Guion de instalación y evaluación |  | 2.5d | 2026-11-26 | 2026-11-30 | 39, 46 | 2026-11-26 | 2026-11-30 | start no earlier than 2026-11-26 | Hugo [8.5%]; José [6.5%] |
| 50 | 6.5 | MGT IT-006 Daily asíncrona |  | 3.03d | 2026-11-25 | 2026-12-01 | 46 | 2026-11-25 | 2026-12-01 | start no earlier than 2026-11-25 | Hugo [1.65%]; Gled [1.65%]; José [1.65%] |
| 51 | 6.6 | MGT IT-006 Coordinación del rol |  | 3.03d | 2026-11-25 | 2026-12-01 | 46 | 2026-11-25 | 2026-12-01 | start no earlier than 2026-11-25 | Hugo [2.06%]; Gled [2.06%]; José [2.06%] |
| 52 | 6.7 | MGT IT-006 Reserva de imprevistos |  | 3.03d | 2026-11-25 | 2026-12-01 | 46 | 2026-11-25 | 2026-12-01 | start no earlier than 2026-11-25 | Hugo [3.72%]; Gled [4.66%]; José [2.69%] |
| 53 | 6.8 | MGT IT-006 Sprint review y retrospectiva |  | 0.1d | 2026-12-01 | 2026-12-01 | 47, 48, 49 | 2026-12-01 | 2026-12-01 | start no earlier than 2026-12-01 | Hugo; Gled; José |
| 54 | 6.9 | Hito R3 · Release 3 entregada (fin del proyecto) | milestone | 0d | 2026-12-01 | 2026-12-01 | 53 | 2026-12-01 | 2026-12-01 |  |  |

Notes:
- 28: Reunión del miércoles 11/11, 16:00-16:45, por Discord: planning 30 min + refinamiento 15 min (team charter, acuerdo 4).
- 29: US-013 · EP-003 · IT-004 · 5 h-p. Horas por persona y fechas de inicio y fin de la hoja Planificación (excel-export-v03).
- 30: US-014 · EP-003 · IT-004 · 3 h-p. Horas por persona y fechas de inicio y fin de la hoja Planificación (excel-export-v03).
- 31: US-015 · EP-003 · IT-004 · 3 h-p. Horas por persona y fechas de inicio y fin de la hoja Planificación (excel-export-v03).
- 32: ≈5 min al día por WhatsApp (acuerdo 5). Es asíncrona: no es una reunión, por eso se reparte a lo largo del sprint.
- 33: Trabajo continuo de PO, TL y SM (hoja Capacidad): refinar el backlog, revisar PR y seguir impedimentos.
- 34: Horas del % de imprevistos de cada persona (DEC-015, hoja Gestión). Solo se gastan si ocurre un imprevisto (RSK-01, RSK-09); tienen coste para que el presupuesto incluya la reserva.
- 35: Reunión del martes 17/11, 17:00-17:50: review 25 min + retro 25 min, cada 2 semanas al cerrar la release (acuerdo 6).
- 38: Reunión del miércoles 18/11, 16:00-16:45, por Discord: planning 30 min + refinamiento 15 min (team charter, acuerdo 4).
- 39: US-017 · EP-004 · IT-005 · 5 h-p. Horas por persona y fechas de inicio y fin de la hoja Planificación (excel-export-v03).
- 40: US-008 · EP-002 · IT-005 · 3 h-p. Horas por persona y fechas de inicio y fin de la hoja Planificación (excel-export-v03).
- 41: US-022 · EP-005 · IT-005 · 5 h-p. Horas por persona y fechas de inicio y fin de la hoja Planificación (excel-export-v03).
- 42: ≈5 min al día por WhatsApp (acuerdo 5). Es asíncrona: no es una reunión, por eso se reparte a lo largo del sprint.
- 43: Trabajo continuo de PO, TL y SM (hoja Capacidad): refinar el backlog, revisar PR y seguir impedimentos.
- 44: Horas del % de imprevistos de cada persona (DEC-015, hoja Gestión). Solo se gastan si ocurre un imprevisto (RSK-01, RSK-09); tienen coste para que el presupuesto incluya la reserva.
- 46: Reunión del miércoles 25/11, 16:00-16:45, por Discord: planning 30 min + refinamiento 15 min (team charter, acuerdo 4).
- 47: US-018 · EP-004 · IT-006 · 5 h-p. Horas por persona y fechas de inicio y fin de la hoja Planificación (excel-export-v03).
- 48: US-019 · EP-004 · IT-006 · 2 h-p. Horas por persona y fechas de inicio y fin de la hoja Planificación (excel-export-v03).
- 49: US-023 · EP-005 · IT-006 · 3 h-p. Horas por persona y fechas de inicio y fin de la hoja Planificación (excel-export-v03).
- 50: ≈5 min al día por WhatsApp (acuerdo 5). Es asíncrona: no es una reunión, por eso se reparte a lo largo del sprint.
- 51: Trabajo continuo de PO, TL y SM (hoja Capacidad): refinar el backlog, revisar PR y seguir impedimentos.
- 52: Horas del % de imprevistos de cada persona (DEC-015, hoja Gestión). Solo se gastan si ocurre un imprevisto (RSK-01, RSK-09); tienen coste para que el presupuesto incluya la reserva.
- 53: Reunión del martes 01/12, 17:00-17:50: review 25 min + retro 25 min, cada 2 semanas al cerrar la release (acuerdo 6).
